# Конференция "Новые информационные технологии в промышленности"

Schedule from MS Project, 2019-03-25 to 2019-05-15, costs in ₽, A marks actual dates.
Проведение конференции, посвященной использованию
РњРџРў
Место проведения - актовый зал МПТ г. Москва. Конференция будет проводится 4-5 июня 2019 г.

## Calendars

- Стандартный: Mon-Fri 09:00-13:00, 14:00-18:00; Sat-Sun off.

## Resources

| Resource | Group | Unit | Rate | Cost per use |
| --- | --- | --- | --- | --- |
| Иванов П.А. | Менеджеры |  |  |  |
| Самохвалов М.К. | Менеджеры |  |  |  |
| Васильев А.П. | Менеджеры |  |  |  |
| Маринина В.И. | Менеджеры |  |  |  |
| Федорова М.П. | Менеджеры |  |  |  |
| Петров М.П. | Инженеры |  |  |  |
| Прохоров В.Я. | Монтажники |  | 25 |  |
| Прохоренко М.И. | Секретари |  |  |  |
| Иволгин А.М. | Водители |  |  |  |
| Кафе "Росинка" | Подрядчики |  |  | 10000 |
| Фирма "Экраны и проекторы" | Подрядчики |  |  |  |
| Кабель |  | М | 30 |  |
| Бумага |  | Пачка | 100 |  |
| Конверт |  | Шт | 5 |  |
| Билеты |  |  |  |  |
| Руководитель проекта |  |  |  |  |
| Ручка |  |  |  |  |
| Помощник руководителя проекта |  |  |  |  |
| Аналитик |  |  |  |  |

## Schedule

| ID | WBS | Task | Type | Duration | Start | Finish | Predecessors | Complete | Remaining | Total slack | Free slack | Resources | Work | Actual work | Cost | Actual cost |
| --- | --- | --- | --- | --- | --- | --- | --- | --- | --- | --- | --- | --- | --- | --- | --- | --- |
| 1 | 1 | **Большой задача** |  | 38d | 2019-03-25 A | 2019-05-15 |  | 6% | 35.68d |  |  |  | 322h | 18h | 66,716.67 | 3,300 |
| 2 | 1.1 | **Разработка концепции конференции** |  | 8.5d | 2019-03-25 A | 2019-04-04 |  | 12% | 7.5d | 29.5d |  |  | 62h | 6h | 100 |  |
| 3 | 1.1.1 | Представлены альтернативные проекты | milestone, manual | 0d | 2019-03-25 | 2019-03-25 |  |  |  |  |  |  |  |  |  |  |
| 4 | 1.1.2 | Выработка предложений по темам докладов и участникам |  | 2d | 2019-03-25 | 2019-03-26 |  |  |  | 195.5d | 0d | Самохвалов М.К. [25%]; Васильев А.П. [25%]; Маринина В.И. [25%]; Федорова М.П. [25%]; Билеты [0.1%] | 16h |  | 100 |  |
| 5 | 1.1.3 | Разработка начального расписания докладов |  | 1d | 2019-03-27 | 2019-03-27 | 4 |  |  | 195.5d | 0d | Самохвалов М.К. [25%]; Васильев А.П. [25%]; Маринина В.И. [25%]; Федорова М.П. [25%] | 8h |  |  |  |
| 6 | 1.1.4 | Обсуждение предложениий |  | 0.5d | 2019-03-28 | 2019-03-28 | 5 |  |  | 195.5d |  |  |  |  |  |  |
| 7 | 1.1.5 | Создание окончательного списка докладов и участников |  | 1d | 2019-03-28 A | 2019-03-29 A | 6 | 100% |  |  |  | Самохвалов М.К. [75%] | 6h | 6h |  |  |
| 8 | 1.1.6 | Контроль исходных списков участников произведен | milestone, manual | 0d | 2019-03-25 | 2019-03-25 |  |  |  |  |  |  |  |  |  |  |
| 9 | 1.1.7 | Произведен анализ возможных отказов групп людей | milestone, manual | 0d | 2019-03-25 | 2019-03-25 |  |  |  |  |  |  |  |  |  |  |
| 10 | 1.1.8 | Приглашение докладчиков из других организаций |  | 3d | 2019-03-29 | 2019-04-03 | 7 |  |  | 178d | 0d | Маринина В.И. [50%]; Федорова М.П. [50%] | 24h |  |  |  |
| 11 | 1.1.9 | Создание окончательного варианта расписания |  | 1d | 2019-04-03 | 2019-04-04 | 10 |  |  | 178d | 0d | Самохвалов М.К. | 8h |  |  |  |
| 12 | 1.1.10 | Утверждение концепции конференции | milestone, manual | 0d | 2019-03-25 | 2019-03-25 |  |  |  |  |  |  |  |  |  |  |
| 13 | 1.2 | **Проведение рекламной кампании** |  | 10d | 2019-04-04 | 2019-04-18 |  |  |  |  |  |  | 80h |  | 25,000 |  |
| 14 | 1.2.1 | Представлены списки получателей рекламы и договора с рекламодателями | milestone, manual | 0d | 2019-04-04 | 2019-04-04 |  |  |  |  |  |  |  |  |  |  |
| 15 | 1.2.2 | Организация почтовой рассылки |  | 3d | 2019-04-04 | 2019-04-09 | 11 |  |  | 178d | 0d | Маринина В.И. [50%]; Федорова М.П. [50%] | 24h |  |  |  |
| 16 | 1.2.3 | Организация рекламы в СМИ и Интернет |  | 3d | 2019-04-09 | 2019-04-12 | 15 |  |  | 178d | 0d | Маринина В.И. [50%]; Федорова М.П. [50%] | 24h |  | 20,000 |  |
| 17 | 1.2.4 | Регистрация участников конференции |  | 1d | 2019-04-12 | 2019-04-15 | 16 |  |  | 178d | 0d | Маринина В.И. [50%]; Федорова М.П. [50%] | 8h |  |  |  |
| 18 | 1.2.5 | Контроль исходных списков зарегистрированных участников конференции произведен | milestone, manual | 0d | 2019-04-04 | 2019-04-04 |  |  |  |  |  |  |  |  |  |  |
| 19 | 1.2.6 | Произведен анализ зарегистрированных участников | milestone, manual | 0d | 2019-04-04 | 2019-04-04 |  |  |  |  |  |  |  |  |  |  |
| 20 | 1.2.7 | Рассылка приглашений |  | 3d | 2019-04-15 | 2019-04-18 | 17 |  |  | 178d | 0d | Маринина В.И. [50%]; Федорова М.П. [50%]; Бумага [5 Пачка]; Конверт [500 Шт] | 24h |  | 5,000 |  |
| 21 | 1.2.8 | Приглашения получены | milestone, manual | 0d | 2019-04-04 | 2019-04-04 |  |  |  |  |  |  |  |  |  |  |
| 22 | 1.3 | **Создание информационных материалов** |  | 1d | 2019-04-18 | 2019-04-19 |  |  |  | 0d |  |  | 16h |  | 5,000 |  |
| 23 | 1.3.1 | Материалы от докладчиков получены | milestone | 0d | 2019-04-18 | 2019-04-18 | 20 |  |  | 178d | 0d |  |  |  |  |  |
| 24 | 1.3.2 | Представлены альтернативные брошюры | milestone, manual | 0d | 2019-04-18 | 2019-04-18 |  |  |  |  |  |  |  |  |  |  |
| 25 | 1.3.3 | Разработка информационной брошюры |  | 1d | 2019-04-18 | 2019-04-19 | 23 |  |  | 178d | 0d | Иванов П.А. | 8h |  |  |  |
| 26 | 1.3.4 | Разработка анкет участников конференции |  | 1d | 2019-04-18 | 2019-04-19 | 23 |  |  | 178d | 0d | Иванов П.А. | 8h |  |  |  |
| 27 | 1.3.5 | Контроль разработки брошюр и анкет произведен | milestone, manual | 0d | 2019-04-18 | 2019-04-18 |  |  |  |  |  |  |  |  |  |  |
| 28 | 1.3.6 | Произведен анализ привлекательности брошюр участниками | milestone, manual | 0d | 2019-04-18 | 2019-04-18 |  |  |  |  |  |  |  |  |  |  |
| 29 | 1.3.7 | Информационные материалы утверждены | milestone, manual | 0d | 2019-04-18 | 2019-04-18 |  |  |  |  |  |  |  |  |  |  |

Notes:
- 11: Расписание

| ID | WBS | Task | Type | Duration | Start | Finish | Predecessors | Complete | Remaining | Total slack | Free slack | Resources | Work | Cost |
| --- | --- | --- | --- | --- | --- | --- | --- | --- | --- | --- | --- | --- | --- | --- |
| 30 | 1.4 | **Договор об аренде актового зала** |  | 2.5d | 2019-04-19 A | 2019-04-23 |  |  | 2.5d | 16d |  |  | 12h | 10,000 |
| 31 | 1.4.1 | Представлен шаблон договора с Университетом | milestone, manual | 0d | 2019-04-19 | 2019-04-19 |  |  |  |  |  |  |  |  |
| 32 | 1.4.2 | Разработка своего варианта договора с Университетом |  | 0.5d | 2019-04-19 | 2019-04-19 | 26, 25 |  |  | 178d | 0d | Маринина В.И. | 4h |  |
| 33 | 1.4.3 | Контроль разработки договора | milestone, manual | 0d | 2019-04-19 | 2019-04-19 |  |  |  |  |  |  |  |  |
| 34 | 1.4.4 | Согласование договора с представителем Университета |  | 1d | 2019-04-22 | 2019-04-22 | 32 |  |  | 178d |  | Маринина В.И. | 8h |  |
| 35 | 1.4.5 | Анализ требований Университета к договору | milestone, manual | 0d | 2019-04-19 | 2019-04-19 |  |  |  |  |  |  |  |  |
| 36 | 1.4.6 | Договор подписан | milestone | 0d | 2019-04-22 A | 2019-04-22 A | 34 | 100% |  |  |  |  |  |  |
| 37 | 1.4.7 | Проплата по договору |  | 1d | 2019-04-23 | 2019-04-23 | 36 |  |  | 166.5d | 0d |  |  |  |
| 38 | 1.4.8 | Договор с Университетом утвержден | milestone, manual | 0d | 2019-04-19 | 2019-04-19 |  |  |  |  |  |  |  |  |
| 39 | 1.5 | **Договор об аренде презентационного оборудования** |  | 4d | 2019-04-24 | 2019-04-29 |  |  |  | 0d |  |  | 20h | 10,000 |
| 40 | 1.5.1 | Представлены контактные данные фирмы "Экраны и проекторы" | milestone, manual | 0d | 2019-04-24 | 2019-04-24 |  |  |  |  |  |  |  |  |
| 41 | 1.5.2 | Заключение договора с фирмой "Экраны и проекторы" |  | 2d | 2019-04-24 | 2019-04-25 | 37 |  |  | 166.5d | 0d | Маринина В.И. | 16h |  |
| 42 | 1.5.3 | Оплата по договору |  | 1d | 2019-04-26 | 2019-04-26 | 41 |  |  | 166.5d | 0d |  |  |  |
| 43 | 1.5.4 | Подписание договора проконтролировано | milestone, manual | 0d | 2019-04-24 | 2019-04-24 |  |  |  |  |  |  |  |  |
| 44 | 1.5.5 | Получение от фирмы "Экраны и проекторы" презентационного оборудования |  | 1d | 2019-04-29 | 2019-04-29 | 42 |  |  | 166.5d | 0d | Маринина В.И. [50%] | 4h |  |
| 45 | 1.5.6 | Анализ полученного оборудования произведено | milestone, manual | 0d | 2019-04-24 | 2019-04-24 |  |  |  |  |  |  |  |  |
| 46 | 1.5.7 | Договор об аренде оборудования утвержден | milestone, manual | 0d | 2019-04-24 | 2019-04-24 |  |  |  |  |  |  |  |  |
| 47 | 1.6 | **Установка презентационного оборудования** |  | 3d | 2019-04-30 | 2019-05-02 |  |  |  | 0d |  |  | 44h | 6,550 |
| 48 | 1.6.1 | Представлены сведения о доступных местах проведения электропитания | milestone, manual | 0d | 2019-04-30 | 2019-04-30 |  |  |  |  |  |  |  |  |
| 49 | 1.6.2 | Обеспечение электропитания в месте проведения мероприятия |  | 0.5d | 2019-04-30 | 2019-04-30 | 44 |  |  | 166.5d | 0d | Петров М.П. [50%]; Прохоров В.Я. [50%] | 4h | 50 |
| 50 | 1.6.3 | Монтирование сети в актовом зале |  | 1d | 2019-04-30 | 2019-05-01 | 49 |  |  | 166.5d | 0d | Петров М.П.; Прохоров В.Я.; Кабель [200 М] | 16h | 6,200 |
| 51 | 1.6.4 | Установка экрана и проектора |  | 0.5d | 2019-05-01 | 2019-05-01 | 50 |  |  | 166.5d | 0d | Петров М.П.; Прохоров В.Я. | 8h | 100 |
| 52 | 1.6.5 | Установка микрофонов |  | 0.5d | 2019-05-02 | 2019-05-02 | 51 |  |  | 166.5d | 0d | Петров М.П.; Прохоров В.Я. | 8h | 100 |
| 53 | 1.6.6 | Установка компьютеров |  | 0.5d | 2019-05-02 | 2019-05-02 | 52 |  |  | 166.5d | 0d | Петров М.П.; Прохоров В.Я. | 8h | 100 |
| 54 | 1.6.7 | Ремонт помещения проконтролирован | milestone, manual | 0d | 2019-04-30 | 2019-04-30 |  |  |  |  |  |  |  |  |
| 55 | 1.6.8 | Произведен анализ совершенного ремонта помещения | milestone, manual | 0d | 2019-04-30 | 2019-04-30 |  |  |  |  |  |  |  |  |
| 56 | 1.6.9 | Установка презентационного оборудования выполнена | milestone, manual | 0d | 2019-04-30 | 2019-04-30 |  |  |  |  |  |  |  |  |

| ID | WBS | Task | Type | Duration | Start | Finish | Predecessors | Complete | Remaining | Total slack | Free slack | Constraint | Resources | Work | Actual work | Cost | Actual cost |
| --- | --- | --- | --- | --- | --- | --- | --- | --- | --- | --- | --- | --- | --- | --- | --- | --- | --- |
| 57 | 1.7 | **Организация питания участников** |  | 4.5d | 2019-05-03 A | 2019-05-09 |  | 33% | 3d | 4d |  |  |  | 36h | 12h | 10,000 | 3,300 |
| 58 | 1.7.1 | Представлены контактные данные кафе "Росинка" | milestone, manual | 0d | 2019-05-03 | 2019-05-03 |  |  |  |  |  |  |  |  |  |  |  |
| 59 | 1.7.2 | Заключение договора с кафе "Росинка" |  | 2d | 2019-05-03 | 2019-05-06 | 53 |  |  | 166.5d | 0d |  | Маринина В.И. | 16h |  |  |  |
| 60 | 1.7.3 | Проплата по договору |  | 1d | 2019-05-07 | 2019-05-07 | 59 |  |  | 166.5d | 0d |  | Маринина В.И. | 8h |  |  |  |
| 61 | 1.7.4 | Подписание договора проконтролировано | milestone, manual | 0d | 2019-05-03 | 2019-05-03 |  |  |  |  |  |  |  |  |  |  |  |
| 62 | 1.7.5 | Произведение анализа меню кафе "Росинка" | milestone, manual | 0d | 2019-05-03 | 2019-05-03 |  |  |  |  |  |  |  |  |  |  |  |
| 63 | 1.7.6 | Определение меню |  | 0.5d | 2019-05-08 A | 2019-05-08 A | 60 | 100% |  |  |  |  | Маринина В.И. | 4h | 4h |  |  |
| 64 | 1.7.7 | Закупка продуктов |  | 1d | 2019-05-08 A | 2019-05-09 A | 63 | 100% |  |  |  |  | Маринина В.И. | 8h | 8h |  |  |
| 65 | 1.7.8 | Договор об организации питания участников утвержден | milestone, manual | 0d | 2019-05-03 | 2019-05-03 |  |  |  |  |  |  |  |  |  |  |  |
| 66 | 1.8 | **Организация проживания иногородних участников** |  | 1.5d | 2019-05-08 | 2019-05-09 |  |  |  | 0d |  |  |  | 12h |  |  |  |
| 67 | 1.8.1 | Получение данных о свободных мест для проживания в гостинице | milestone, manual | 0d | 2019-05-08 | 2019-05-08 |  |  |  |  |  |  |  |  |  |  |  |
| 68 | 1.8.2 | Бронирование мест в гсотинице |  | 0.5d | 2019-05-08 | 2019-05-08 | 60 |  |  | 166.5d |  |  | Прохоренко М.И. | 4h |  |  |  |
| 69 | 1.8.3 | Оповещение иногородних участников о месте проживания |  | 1d | 2019-05-08 | 2019-05-09 | 63 |  |  | 161.5d | 0d |  | Прохоренко М.И. | 8h |  |  |  |
| 70 | 1.8.4 | Получение данных об ответе на оповещение участников проконтролировано | milestone, manual | 0d | 2019-05-08 | 2019-05-08 |  |  |  |  |  |  |  |  |  |  |  |
| 71 | 1.8.5 | Анализ ответивших участников | milestone, manual | 0d | 2019-05-08 | 2019-05-08 |  |  |  |  |  |  |  |  |  |  |  |
| 72 | 1.8.6 | Организация проживания иногородних участников совершена | milestone, manual | 0d | 2019-05-08 | 2019-05-08 |  |  |  |  |  |  |  |  |  |  |  |
| 73 | 1.9 | **Конференция** |  | 2d | 2019-05-09 | 2019-05-13 |  |  |  | 0d |  |  |  |  |  |  |  |
| 74 | 1.9.1 | Подготовка к открытию конференции | milestone, manual | 0d | 2019-05-09 | 2019-05-09 |  |  |  |  |  |  |  |  |  |  |  |
| 75 | 1.9.2 | Конференция |  | 2d | 2019-05-09 | 2019-05-13 | 69, 64 |  |  | 161.5d | 0d |  |  |  |  |  |  |
| 76 | 1.9.3 | Контроль проведения конференции произведен | milestone, manual | 0d | 2019-05-09 | 2019-05-09 |  |  |  |  |  |  |  |  |  |  |  |
| 77 | 1.9.4 | Анализ неудавшихся моментов во время проведения конференции | milestone, manual | 0d | 2019-05-09 | 2019-05-09 |  |  |  |  |  |  |  |  |  |  |  |
| 78 | 1.9.5 | Конференция проведена | milestone, manual | 0d | 2019-05-09 | 2019-05-09 |  |  |  |  |  |  |  |  |  |  |  |
| 79 | 1.10 | **Демонтаж и возврат оборудования** |  | 1d | 2019-05-13 | 2019-05-14 |  |  |  | 0d |  |  |  | 8h |  | 66.67 |  |
| 80 | 1.10.1 | Подготовка оборудования к его сдаче | milestone, manual | 0d | 2019-05-13 | 2019-05-13 |  |  |  |  |  |  |  |  |  |  |  |
| 81 | 1.10.2 | Демонтаж и возврат оборудования |  | 1d | 2019-05-13 | 2019-05-14 | 75 |  |  | 162.5d |  | finish no earlier than 2019-05-13 | Петров М.П.; Прохоров В.Я.; Иволгин А.М. | 8h |  | 66.67 |  |
| 82 | 1.10.3 | Контроль оборудования проведен | milestone, manual | 0d | 2019-05-13 | 2019-05-13 |  |  |  |  |  |  |  |  |  |  |  |
| 83 | 1.10.4 | Анализ качества оборудования от фирмы "Экраны и проекторы" произведен | milestone, manual | 0d | 2019-05-13 | 2019-05-13 |  |  |  |  |  |  |  |  |  |  |  |
| 84 | 1.10.5 | Демонтаж и возврат оборудования завершен | milestone, manual | 0d | 2019-05-13 | 2019-05-13 |  |  |  |  |  |  |  |  |  |  |  |

| ID | WBS | Task | Type | Duration | Start | Finish | Predecessors | Total slack | Constraint | Resources | Work |
| --- | --- | --- | --- | --- | --- | --- | --- | --- | --- | --- | --- |
| 85 | 1.11 | **Анализ отзывов и анкет участников** |  | 2d | 2019-05-14 | 2019-05-15 |  | 0d |  |  | 32h |
| 86 | 1.11.1 | Предоставление отзывов и анкет участников | milestone, manual | 0d | 2019-05-14 | 2019-05-14 |  |  |  |  |  |
| 87 | 1.11.2 | Контроль получения всех отзывов и анкет произведен | milestone, manual | 0d | 2019-05-14 | 2019-05-14 |  |  |  |  |  |
| 88 | 1.11.3 | Анализ отзывов и анкет участников произведен |  | 2d | 2019-05-14 | 2019-05-15 | 75 | 0d | finish no earlier than 2019-05-15 | Самохвалов М.К.; Маринина В.И. | 32h |
| 89 | 1.11.4 | Отзывы и анкеты были проанализированы | milestone, manual | 0d | 2019-05-14 | 2019-05-14 |  |  |  |  |  |
